# SmartTouristGuideApp

Schedule from MS Project, 2023-03-12 to 2023-09-12, scheduled back from the finish, costs in $, A marks actual dates.
Project management project phase 2
University of jeddah

## Calendars

- Standard: Mon-Fri 08:00-12:00, 13:00-17:00; Sat-Sun off. Exceptions (off unless hours are given): 2023-05-27 (Day off).

## Resources

| Resource | Group | Rate | Cost per use |
| --- | --- | --- | --- |
| Mobile app Developer 1 | Devs | 50 |  |
| UI/UX Designer | Devs | 60 |  |
| Backend Developer | Devs | 55 |  |
| Database Administrator | Devs | 50 |  |
| Quality Assurance Tester | Devs | 45 |  |
| Software Development Tools |  | 500 | 1 |
| Graphic Design Software |  | 200 | 1 |
| Prototyping Tools |  | 100 | 1 |
| Data Provider |  | 1000 | 1 |
| Maps API |  | 500 | 1 |
| Weather API |  | 300 | 1 |
| Content Writer | Devs | 40 |  |
| Multimedia Designer | Devs | 50 |  |
| Hosting Services |  |  |  |
| Cloud Services |  |  |  |
| iOS Devices |  | 1000 | 1 |
| Andriod Device |  | 1000 | 1 |
| Project Manager |  | 60 |  |
| Business Analyst |  | 50 |  |

## Schedule

| ID | WBS | Task | Type | Duration | Start | Finish | Predecessors | Complete | Remaining | Baseline start | Baseline finish | Baseline duration | Constraint | Resources | Work | Actual work | Cost | Baseline cost | Actual cost |
| --- | --- | --- | --- | --- | --- | --- | --- | --- | --- | --- | --- | --- | --- | --- | --- | --- | --- | --- | --- |
| 1 | 1 | **1. Project Management** |  | 8d | 2023-03-12 A | 2023-03-21 A |  | 100% |  | 2023-03-12 | 2023-03-21 | 8d | as late as possible |  | 72h | 72h | 4,320 | 4,320 | 4,320 |
| 2 | 1.1 | 1.1 Project Planning | manual | 2d | 2023-03-12 A | 2023-03-13 A |  | 100% |  | 2023-03-12 | 2023-03-13 | 2d | as late as possible | Project Manager | 16h | 16h | 960 | 960 | 960 |
| 3 | 1.2 | 1.2 Project Execution | manual | 4d | 2023-03-14 A | 2023-03-17 A | 2 | 100% |  | 2023-03-14 | 2023-03-17 | 4d | as late as possible | Project Manager | 32h | 32h | 1,920 | 1,920 | 1,920 |
| 4 | 1.3 | 1.3 Project Monitoring and control | manual | 2d | 2023-03-18 A | 2023-03-20 A | 3 | 100% |  | 2023-03-18 | 2023-03-20 | 2d | as late as possible | Project Manager | 16h | 16h | 960 | 960 | 960 |
| 5 | 1.4 | 1.4 Project Closure | manual | 1d | 2023-03-21 A | 2023-03-21 A | 4 | 100% |  | 2023-03-21 | 2023-03-21 | 1d | as late as possible | Project Manager | 8h | 8h | 480 | 480 | 480 |
| 6 | 2 | **2. Requirements Gathering and Analysis** |  | 27d | 2023-03-23 A | 2023-04-28 A | 1 | 100% |  | 2023-03-23 | 2023-04-28 | 27d | as late as possible |  | 224h | 224h | 11,200 | 11,200 | 11,200 |
| 7 | 2.1 | 2.1 Conduct user surveys and interviews | manual | 2d | 2023-03-23 A | 2023-03-24 A |  | 100% |  | 2023-03-23 | 2023-03-24 | 2d | as late as possible | Business Analyst | 16h | 16h | 800 | 800 | 800 |
| 8 | 2.2 | 2.2 user needs and preferences | manual | 3d | 2023-03-25 A | 2023-03-28 A | 7 | 100% |  | 2023-03-25 | 2023-03-28 | 3d | as late as possible | Business Analyst | 24h | 24h | 1,200 | 1,200 | 1,200 |
| 9 | 2.3 | 2.3 define functional requirements | manual | 7d | 2023-03-29 A | 2023-04-06 A | 8 | 100% |  | 2023-03-29 | 2023-04-06 | 7d | as late as possible | Business Analyst | 56h | 56h | 2,800 | 2,800 | 2,800 |
| 10 | 2.4 | 2.4 analyze technical requirements | manual | 10d | 2023-04-07 A | 2023-04-20 A | 9 | 100% |  | 2023-04-07 | 2023-04-20 | 10d | as late as possible | Business Analyst | 80h | 80h | 4,000 | 4,000 | 4,000 |
| 11 | 2.5 | 2.5 Documnt requirements | manual | 6d | 2023-04-21 A | 2023-04-28 A | 10 | 100% |  | 2023-04-21 | 2023-04-28 | 6d | as late as possible | Business Analyst | 48h | 48h | 2,400 | 2,400 | 2,400 |
| 12 | 3 | **3. Design and UI/UX development** |  | 16d | 2023-04-30 A | 2023-05-19 A | 6 | 100% |  | 2023-04-30 | 2023-05-19 | 16d | as late as possible | Graphic Design Software | 128h | 128h | 8,183 | 8,183 | 8,183 |
| 13 | 3.1 | 3.1 Create wireframes and mockups | manual | 4d | 2023-04-30 A | 2023-05-03 A |  | 100% |  | 2023-04-30 | 2023-05-03 | 4d | as late as possible | UI/UX Designer; Prototyping Tools | 32h | 32h | 2,021 | 2,021 | 2,021 |
| 14 | 3.2 | 3.2 Develop visual design concepts | manual | 4d | 2023-05-04 A | 2023-05-09 A | 13 | 100% |  | 2023-05-04 | 2023-05-09 | 4d | as late as possible | UI/UX Designer; Graphic Design Software | 32h | 32h | 2,121 | 2,121 | 2,121 |
| 15 | 3.3 | 3.3 Design user interface elements | manual | 4d | 2023-05-10 A | 2023-05-15 A | 14 | 100% |  | 2023-05-10 | 2023-05-15 | 4d | as late as possible | UI/UX Designer | 32h | 32h | 1,920 | 1,920 | 1,920 |
| 16 | 3.4 | 3.4 Conduct usability testing and feedback iteration | manual | 4d | 2023-05-16 A | 2023-05-19 A | 15 | 100% |  | 2023-05-16 | 2023-05-19 | 4d | as late as possible | UI/UX Designer | 32h | 32h | 1,920 | 1,920 | 1,920 |
| 17 | 4 | **4. Database Creation and management** |  | 8d | 2023-05-20 A | 2023-05-30 | 12 | 82% | 1.47d | 2023-05-20 | 2023-05-30 | 8d | as late as possible |  | 72h | 58.8h | 4,601 | 4,601 | 4,601 |
| 18 | 4.1 | 4.1 Identify data sources and content providers | manual | 2d | 2023-05-20 A | 2023-05-22 A |  | 100% |  | 2023-05-20 | 2023-05-22 | 2d | as late as possible | Database Administrator | 16h | 16h | 800 | 800 | 800 |
| 19 | 4.2 | 4.2 Collect and curate destination information | manual | 2d | 2023-05-23 A | 2023-05-24 A | 18 | 100% |  | 2023-05-23 | 2023-05-24 | 2d | as late as possible | Database Administrator; Data Provider | 16h | 16h | 1,801 | 1,801 | 1,801 |
| 20 | 4.3 | 4.3 Establish data storage and management system | manual | 2d | 2023-05-25 A | 2023-05-26 A | 19 | 100% |  | 2023-05-25 | 2023-05-26 | 2d | as late as possible | Database Administrator | 16h | 16h | 800 | 800 | 800 |
| 21 | 4.4 | 4.4 Implement data security measures | manual | 3d | 2023-05-26 A | 2023-05-30 | 20 | 45% | 1.65d | 2023-05-26 | 2023-05-30 | 3d | as late as possible | Database Administrator | 24h | 10.8h | 1,200 | 1,200 | 1,200 |
| 22 | 5 | **5. App development** |  | 30d | 2023-05-31 | 2023-07-11 | 17 |  |  | 2023-05-31 | 2023-07-11 | 30d | as late as possible | Software Development Tools | 240h |  | 12,981 | 12,981 |  |
| 23 | 5.1 | **5.1 Front-end development** |  | 11d | 2023-05-31 | 2023-06-14 |  |  |  | 2023-05-31 | 2023-06-14 | 11d | as late as possible |  | 96h |  | 4,800 | 4,800 |  |
| 24 | 5.1.1 | 5.1.1 develop home screen and navigation | manual | 4d | 2023-05-31 | 2023-06-05 |  |  |  | 2023-05-31 | 2023-06-05 | 4d | as late as possible | Mobile app Developer 1 | 32h |  | 1,600 | 1,600 |  |
| 25 | 5.1.2 | 5.1.2 implement user profile and settings | manual | 4d | 2023-06-06 | 2023-06-09 | 24 |  |  | 2023-06-06 | 2023-06-09 | 4d | as late as possible | Mobile app Developer 1 | 32h |  | 1,600 | 1,600 |  |
| 26 | 5.1.3 | 5.1.3 create destination search and filtering | manual | 4d | 2023-06-10 | 2023-06-14 | 25 |  |  | 2023-06-10 | 2023-06-14 | 4d | as late as possible | Mobile app Developer 1 | 32h |  | 1,600 | 1,600 |  |

Notes:
- 1: First step of the project, and needed to be done in 8 days at max
- 6: Second step of the project which contain information gathering and analysis / needed to be done in 27 days as a late finish
- 12: first practical step that contains creating and designing the user interface / needed to be done in 16 days at max
- 17: in this step you will create the database to store the user's information and login details / needed to be done in 8 days at max
- 22: In this step the app begins to be developed,,, front/back end. / must be done in 30 days at max

| ID | WBS | Task | Type | Duration | Start | Finish | Predecessors | Baseline start | Baseline finish | Baseline duration | Constraint | Resources | Work | Cost | Baseline cost |
| --- | --- | --- | --- | --- | --- | --- | --- | --- | --- | --- | --- | --- | --- | --- | --- |
| 27 | 5.2 | **5.2 Back-end development** |  | 12d | 2023-06-16 | 2023-07-03 | 23SS | 2023-06-16 | 2023-07-03 | 12d | as late as possible |  | 96h | 5,280 | 5,280 |
| 28 | 5.2.1 | 5.2.1 build server-side APIs for data retrieval | manual | 4d | 2023-06-16 | 2023-06-21 |  | 2023-06-16 | 2023-06-21 | 4d | as late as possible | Backend Developer | 32h | 1,760 | 1,760 |
| 29 | 5.2.2 | 5.2.2 Implement user authentication and authorization | manual | 4d | 2023-06-22 | 2023-06-27 | 28 | 2023-06-22 | 2023-06-27 | 4d | as late as possible | Backend Developer | 32h | 1,760 | 1,760 |
| 30 | 5.2.3 | 5.2.3 Intergration recommendation engine | manual | 4d | 2023-06-28 | 2023-07-03 | 29 | 2023-06-28 | 2023-07-03 | 4d | as late as possible | Backend Developer | 32h | 1,760 | 1,760 |
| 31 | 5.3 | **5.3 Integration of features** |  | 6d | 2023-07-04 | 2023-07-11 | 23, 27 | 2023-07-04 | 2023-07-11 | 6d | as late as possible |  | 48h | 2,400 | 2,400 |
| 32 | 5.3.1 | 5.3.1 Combine front-end and back-end components | manual | 3d | 2023-07-04 | 2023-07-06 |  | 2023-07-04 | 2023-07-06 | 3d | as late as possible | Mobile app Developer 1 | 24h | 1,200 | 1,200 |
| 33 | 5.3.2 | 5.3.2 Test and validate feature integration | manual | 3d | 2023-07-07 | 2023-07-11 | 32 | 2023-07-07 | 2023-07-11 | 3d | as late as possible | Mobile app Developer 1 | 24h | 1,200 | 1,200 |
| 34 | 6 | **6. Navigation and Mapping** |  | 9d | 2023-07-12 | 2023-07-24 | 22 | 2023-07-12 | 2023-07-24 | 9d | as late as possible | Maps API | 88h | 5,402 | 5,402 |
| 35 | 6.1 | 6.1 Integrate mapping APIs | manual | 3d | 2023-07-12 | 2023-07-14 |  | 2023-07-12 | 2023-07-14 | 3d | as late as possible | Mobile app Developer 1; Maps API | 24h | 1,701 | 1,701 |
| 36 | 6.2 | 6.2 Implement turn-by-turn navigation | manual | 4d | 2023-07-14 | 2023-07-19 | 35 | 2023-07-15 | 2023-07-19 | 4d | as late as possible | Mobile app Developer 1 | 32h | 1,600 | 1,600 |
| 37 | 6.3 | 6.3 Incorporate real-time traffic updates | manual | 2d | 2023-07-20 | 2023-07-21 | 36 | 2023-07-20 | 2023-07-21 | 2d | as late as possible | Mobile app Developer 1 | 16h | 800 | 800 |
| 38 | 6.4 | 6.4 Develop offline maps functionallity | manual | 2d | 2023-07-22 | 2023-07-24 | 37 | 2023-07-22 | 2023-07-24 | 2d | as late as possible | Mobile app Developer 1 | 16h | 800 | 800 |
| 39 | 7 | **7. Augmented Reality Integration** |  | 7d | 2023-07-25 | 2023-08-02 | 34 | 2023-07-25 | 2023-08-02 | 7d | as late as possible |  | 64h | 3,200 | 3,200 |
| 40 | 7.1 | 7.1 Research and select AR technologies | manual | 2d | 2023-07-25 | 2023-07-26 |  | 2023-07-25 | 2023-07-26 | 2d | as late as possible | Mobile app Developer 1 | 16h | 800 | 800 |
| 41 | 7.2 | 7.2 Implement AR overlays for landmakrs and attractions | manual | 2d | 2023-07-27 | 2023-07-28 | 40 | 2023-07-27 | 2023-07-28 | 2d | as late as possible | Mobile app Developer 1 | 16h | 800 | 800 |
| 42 | 7.3 | 7.3 Integrate AR content management system | manual | 2d | 2023-07-28 | 2023-07-31 | 41 | 2023-07-29 | 2023-07-31 | 2d | as late as possible | Mobile app Developer 1 | 16h | 800 | 800 |
| 43 | 7.4 | 7.4 Test and optimize AR experiences | manual | 2d | 2023-08-01 | 2023-08-02 | 42 | 2023-08-01 | 2023-08-02 | 2d | as late as possible | Mobile app Developer 1 | 16h | 800 | 800 |
| 44 | 8 | **8. Social Connectivity Features** |  | 7d | 2023-08-04 | 2023-08-13 | 39 | 2023-08-04 | 2023-08-13 | 7d | as late as possible |  | 56h | 2,800 | 2,800 |
| 45 | 8.1 | 8.1 Develop user profiles and registeration | manual | 2d | 2023-08-04 | 2023-08-07 |  | 2023-08-04 | 2023-08-07 | 2d | as late as possible | Mobile app Developer 1 | 16h | 800 | 800 |
| 46 | 8.2 | 8.2 Implement messaging and communication | manual | 2d | 2023-08-08 | 2023-08-09 | 45 | 2023-08-08 | 2023-08-09 | 2d | as late as possible | Mobile app Developer 1 | 16h | 800 | 800 |
| 47 | 8.3 | 8.3 Enable user reviews and ratings | manual | 1d | 2023-08-10 | 2023-08-10 | 46 | 2023-08-10 | 2023-08-10 | 1d | as late as possible | Mobile app Developer 1 | 8h | 400 | 400 |
| 48 | 8.4 | 8.4 Integrate photo sharing and social media features | manual | 2d | 2023-08-11 | 2023-08-13 | 47 | 2023-08-11 | 2023-08-13 | 2d | as late as possible | Mobile app Developer 1 | 16h | 800 | 800 |
| 49 | 9 | **9. Testing and Quality Assurance** |  | 7d | 2023-08-14 | 2023-08-22 | 44 | 2023-08-14 | 2023-08-22 | 7d | as late as possible |  | 56h | 2,520 | 2,520 |
| 50 | 9.1 | 9.1 Create test cases and test scenarios | manual | 2d | 2023-08-14 | 2023-08-15 |  | 2023-08-14 | 2023-08-15 | 2d | as late as possible | Quality Assurance Tester | 16h | 720 | 720 |
| 51 | 9.2 | 9.2 perform functional and usability testing | manual | 2d | 2023-08-16 | 2023-08-17 | 50 | 2023-08-16 | 2023-08-17 | 2d | as late as possible | Quality Assurance Tester | 16h | 720 | 720 |
| 52 | 9.3 | 9.3 Identify and fix bugs and issues | manual | 2d | 2023-08-18 | 2023-08-21 | 51 | 2023-08-18 | 2023-08-21 | 2d | as late as possible | Quality Assurance Tester | 16h | 720 | 720 |
| 53 | 9.4 | 9.4 Conduct performance and security testing | manual | 1d | 2023-08-22 | 2023-08-22 | 52 | 2023-08-22 | 2023-08-22 | 1d | as late as possible | Quality Assurance Tester | 8h | 360 | 360 |

Notes:
- 34: addding the navigation feature and implement some new technologies / must be done in 9 days
- 39: integerate the Augmented reality (AR) with the navigation
- 44: adding login and registeration features as well as messaging ....etc
- 49: creating some scenarios to test the quality

| ID | WBS | Task | Type | Duration | Start | Finish | Predecessors | Baseline start | Baseline finish | Baseline duration | Constraint | Resources | Work | Cost | Baseline cost |
| --- | --- | --- | --- | --- | --- | --- | --- | --- | --- | --- | --- | --- | --- | --- | --- |
| 54 | 10 | **10. Deployment and Release** |  | 8d | 2023-08-23 | 2023-09-01 | 49 | 2023-08-23 | 2023-09-01 | 8d | as late as possible |  | 64h | 3,200 | 3,200 |
| 55 | 10.1 | 10.1 Prepare app for app store submission | manual | 2d | 2023-08-23 | 2023-08-24 |  | 2023-08-23 | 2023-08-24 | 2d | as late as possible | Mobile app Developer 1 | 16h | 800 | 800 |
| 56 | 10.2 | 10.2 Create app store assests and descriptions | manual | 2d | 2023-08-25 | 2023-08-28 | 55 | 2023-08-25 | 2023-08-28 | 2d | as late as possible | Mobile app Developer 1 | 16h | 800 | 800 |
| 57 | 10.3 | 10.3 Submit app for review and approval | manual | 2d | 2023-08-29 | 2023-08-30 | 56 | 2023-08-29 | 2023-08-30 | 2d | as late as possible | Mobile app Developer 1 | 16h | 800 | 800 |
| 58 | 10.4 | 10.4 Deploy app to app stores | manual | 2d | 2023-08-31 | 2023-09-01 | 57 | 2023-08-31 | 2023-09-01 | 2d | as late as possible | Mobile app Developer 1 | 16h | 800 | 800 |
| 59 | 11 | **11. User Feedback and Iterative Improvements** |  | 8d | 2023-09-02 | 2023-09-12 | 58, 54 | 2023-09-02 | 2023-09-12 | 8d | as late as possible |  | 64h | 3,840 | 3,840 |
| 60 | 11.1 | 11.1 Gather user feedback and analytics | manual | 2d | 2023-09-02 | 2023-09-04 |  | 2023-09-02 | 2023-09-04 | 2d | as late as possible | Project Manager | 16h | 960 | 960 |
| 61 | 11.2 | 11.2 Analyze user behavior and app usage | manual | 2d | 2023-09-05 | 2023-09-06 |  | 2023-09-05 | 2023-09-06 | 2d | as late as possible | Project Manager | 16h | 960 | 960 |
| 62 | 11.3 | 11.3 Identify areas for improvement | manual | 2d | 2023-09-08 | 2023-09-11 |  | 2023-09-08 | 2023-09-11 | 2d | as late as possible | Project Manager | 16h | 960 | 960 |
| 63 | 11.4 | 11.4 Implement updates and enhancements | manual | 2d | 2023-09-11 | 2023-09-12 |  | 2023-09-11 | 2023-09-12 | 2d | as late as possible | Project Manager | 16h | 960 | 960 |

Notes:
- 54: Preparing the app to be published and released after testing the quality of it
- 59: gathering the user's feedback about the app and continue updating the app every now and then.
